# CronogramaV1

Schedule from MS Project, 2018-01-29 to 2018-05-04.

## Calendars

- Estándar: Mon-Fri 09:00-13:00, 15:00-19:00; Sat-Sun off.

## Resources

| Resource |
| --- |
| Recurso1 |
| Recurso2 |
| Recurso0 |

## Schedule

| ID | WBS | Task | Duration | Start | Finish | Predecessors | Total slack | Constraint | Resources | Work |
| --- | --- | --- | --- | --- | --- | --- | --- | --- | --- | --- |
| 1 | 1 | **Proyecto de Transmisiones** | 70d | 2018-01-29 | 2018-05-04 |  | 0d |  |  | 840h |
| 2 | 1.1 | **Analisis y Diseño** | 15d | 2018-01-29 | 2018-02-16 |  | 0d |  | Recurso0 | 120h |
| 3 | 1.1.1 | Analizar solución del proyecto | 1d | 2018-01-29 | 2018-01-29 |  | 0d | start no earlier than 2018-01-29 |  |  |
| 4 | 1.1.2 | **Documentar historias de usuario** | 14d | 2018-01-30 | 2018-02-16 |  | 0d |  |  |  |
| 5 | 1.1.2.1 | **Transmision Importaciones** | 12d | 2018-01-30 | 2018-02-14 |  | 0d |  |  |  |
| 6 | 1.1.2.1.1 | **HU Tablero control transmisiones** | 6d | 2018-01-30 | 2018-02-06 |  | 0d |  |  |  |
| 7 | 1.1.2.1.1.1 | Modulo de tablero de control de transmisiones | 3d | 2018-01-30 | 2018-02-01 | 3 | 0d |  |  |  |
| 8 | 1.1.2.1.1.2 | Asignacion de perfiles de visualizacion(LA, Impo, Expo) | 0.5d | 2018-02-02 | 2018-02-02 | 7 | 0d |  |  |  |
| 9 | 1.1.2.1.1.3 | Modulo de pendientes | 0.5d | 2018-02-02 | 2018-02-02 | 8 | 0d |  |  |  |
| 10 | 1.1.2.1.1.4 | Modulo transmision aduanas(Teledespacho, TCI, archivo respuesta) | 2d | 2018-02-05 | 2018-02-06 | 9 | 0d |  |  |  |
| 11 | 1.1.2.1.2 | **HU Linea Aerea** | 2d | 2018-02-07 | 2018-02-08 |  | 0d |  |  |  |
| 12 | 1.1.2.1.2.1 | Consulta itineraios de LA | 0.5d | 2018-02-07 | 2018-02-07 | 10 | 0d |  |  |  |
| 13 | 1.1.2.1.2.2 | Indicador Manifiesto de carga provisional | 0.5d | 2018-02-07 | 2018-02-07 | 12 | 0d |  |  |  |
| 14 | 1.1.2.1.2.3 | Indicador Descarga de la mercancia | 0.5d | 2018-02-08 | 2018-02-08 | 13 | 0d |  |  |  |
| 15 | 1.1.2.1.2.4 | Indicador Bultos Faltos/Sobrantes y Actas ME | 0.5d | 2018-02-08 | 2018-02-08 | 14 | 0d |  |  |  |
| 16 | 1.1.2.1.3 | **HU Deposito Temporal** | 2d | 2018-02-09 | 2018-02-12 |  | 0d |  |  |  |
| 17 | 1.1.2.1.3.1 | Listar información | 1d | 2018-02-09 | 2018-02-09 | 15 | 0d |  |  |  |
| 18 | 1.1.2.1.3.2 | Indicador Manifiesto consolidado provisional | 0.5d | 2018-02-12 | 2018-02-12 | 17 | 0d |  |  |  |
| 19 | 1.1.2.1.3.3 | Indicador Manifiesto consolidado complementario | 0.5d | 2018-02-12 | 2018-02-12 | 18 | 0d |  |  |  |
| 20 | 1.1.2.1.4 | **HU Agente de Carga** | 2d | 2018-02-13 | 2018-02-14 |  | 0d |  |  |  |
| 21 | 1.1.2.1.4.1 | Listar información | 1d | 2018-02-13 | 2018-02-13 | 19 | 0d |  |  |  |
| 22 | 1.1.2.1.4.2 | Ingreso recepcion mercancia(LCL) | 0.5d | 2018-02-14 | 2018-02-14 | 21 | 0d |  |  |  |
| 23 | 1.1.2.1.4.3 | Indicador Bultos faltos/sobrantes y Actas ME(almacen) | 0.5d | 2018-02-14 | 2018-02-14 | 22 | 0d |  |  |  |
| 24 | 1.1.2.2 | **Transmision Exportaciones** | 2d | 2018-02-15 | 2018-02-16 |  | 0d |  |  |  |
| 25 | 1.1.2.2.1 | Consulta itinerario LA Exportación | 1d | 2018-02-15 | 2018-02-15 | 23 | 0d |  |  |  |
| 26 | 1.1.2.2.2 | HU Módulo de transmision canal | 1d | 2018-02-16 | 2018-02-16 | 25 | 0d |  |  |  |

| ID | WBS | Task | Duration | Start | Finish | Predecessors | Total slack | Free slack | Constraint | Resources | Work |
| --- | --- | --- | --- | --- | --- | --- | --- | --- | --- | --- | --- |
| 27 | 1.2 | **Desarrollo** | 45d | 2018-02-19 | 2018-04-20 |  | 0d |  |  |  | 640h |
| 28 | 1.2.1 | **Transversales** | 8d | 2018-02-19 | 2018-02-28 |  | 10d |  |  |  | 64h |
| 29 | 1.2.1.1 | Generar ambiente de desarrollo | 3d | 2018-02-19 | 2018-02-21 | 26 | 9d | 0d |  | Recurso1 | 24h |
| 30 | 1.2.1.2 | Desarrollo de la Arquitectura Tablero | 5d | 2018-02-22 | 2018-02-28 | 29 | 9d | 0d |  | Recurso1 | 40h |
| 31 | 1.2.2 | **Transmisiones Importaciones** | 35d | 2018-02-19 | 2018-04-06 |  | 0d |  |  |  | 496h |
| 32 | 1.2.2.1 | **Desarrollo BD** | 25d | 2018-02-19 | 2018-03-23 |  | 0d |  |  |  | 200h |
| 33 | 1.2.2.1.1 | Crear logica de BD del Tablero | 10d | 2018-02-19 | 2018-03-02 | 26 | 0d |  |  | Recurso2 | 80h |
| 34 | 1.2.2.1.2 | Creacion de SP de Mantenimiento Maestros | 5d | 2018-03-05 | 2018-03-09 | 33 | 0d |  |  | Recurso2 | 40h |
| 35 | 1.2.2.1.3 | **Crear logica de BD de integracion** | 4d | 2018-03-12 | 2018-03-15 |  | 0d |  |  |  | 32h |
| 36 | 1.2.2.1.3.1 | Integracion con SITRADI | 2d | 2018-03-12 | 2018-03-13 | 34 | 0d |  |  | Recurso2 | 16h |
| 37 | 1.2.2.1.3.2 | Integracion con HERMES | 2d | 2018-03-14 | 2018-03-15 | 36 | 0d |  |  | Recurso2 | 16h |
| 38 | 1.2.2.1.4 | **Logica de Indicadores** | 6d | 2018-03-16 | 2018-03-23 |  | 0d |  |  |  | 48h |
| 39 | 1.2.2.1.4.1 | Linea aerea | 2d | 2018-03-16 | 2018-03-19 | 37 | 0d |  |  | Recurso2 | 16h |
| 40 | 1.2.2.1.4.2 | Deposito temporal | 2d | 2018-03-20 | 2018-03-21 | 39 | 0d |  |  | Recurso2 | 16h |
| 41 | 1.2.2.1.4.3 | Agente de carga | 2d | 2018-03-22 | 2018-03-23 | 40 | 0d |  |  | Recurso2 | 16h |
| 42 | 1.2.2.2 | **Desarrollo Web** | 27d | 2018-03-01 | 2018-04-06 |  | 10d |  |  |  | 296h |
| 43 | 1.2.2.2.1 | Desarrollo del Tablero de control de Impo | 22d | 2018-03-01 | 2018-03-30 | 30 | 9d | 0d | start no earlier than 2018-02-20 | Recurso1 | 176h |
| 44 | 1.2.2.2.2 | Desarrollo Modulo de registro horas llegada/descarga(GHA) | 5d | 2018-04-02 | 2018-04-06 | 43 | 9d | 0d |  | Recurso1 | 40h |
| 45 | 1.2.2.2.3 | Desarrollo / Modificacion teledespacho | 10d | 2018-03-26 | 2018-04-06 | 41 | 0d |  |  | Recurso2 | 80h |
| 46 | 1.2.3 | **Transmisiones Exportaciones** | 10d | 2018-04-09 | 2018-04-20 |  | 10d |  |  |  | 80h |
| 47 | 1.2.3.1 | Migración transmision de expo | 10d | 2018-04-09 | 2018-04-20 | 44 | 9d |  |  | Recurso1 | 80h |
| 48 | 1.3 | **Pruebas** | 5d | 2018-04-18 | 2018-04-24 |  | 0d |  |  |  | 40h |
| 49 | 1.3.1 | Pruebas unitarias | 2d | 2018-04-18 | 2018-04-19 | 45FS+7d | 0d |  |  | Recurso2 | 16h |
| 50 | 1.3.2 | Pruebas funcionales | 3d | 2018-04-20 | 2018-04-24 | 49 | 0d |  |  | Recurso2 | 24h |

| ID | WBS | Task | Duration | Start | Finish | Predecessors | Total slack | Constraint | Resources | Work |
| --- | --- | --- | --- | --- | --- | --- | --- | --- | --- | --- |
| 51 | 1.4 | **Despliegue** | 8d | 2018-04-25 | 2018-05-04 |  | 0d |  |  | 40h |
| 52 | 1.4.1 | Pase a produccion | 2d | 2018-04-25 | 2018-04-26 | 50 | 0d | start no earlier than 2018-04-12 | Recurso1; Recurso2 | 24h |
| 53 | 1.4.2 | Soporte posproduccion | 2d | 2018-04-27 | 2018-05-04 | 52 | 0d | start no earlier than 2018-04-13 | Recurso1; Recurso2 | 16h |
