# CronogramaV1

Schedule from MS Project, 2018-01-02 to 2018-04-30, A marks actual dates.

## Calendars

- Estándar: Mon-Fri 09:00-13:00, 15:00-19:00; Sat-Sun off.

## Resources

| Resource |
| --- |
| Recurso1 |
| Recurso2 |
| Recurso0 |
| Resurso2 |

## Schedule

| ID | WBS | Task | Duration | Start | Finish | Predecessors | Complete | Remaining | Total slack | Free slack | Constraint | Resources | Work | Actual work |
| --- | --- | --- | --- | --- | --- | --- | --- | --- | --- | --- | --- | --- | --- | --- |
| 1 | 1 | **Proyecto de Transmisiones** | 85d? | 2018-01-02 09:00 A | 2018-04-30 19:00 |  | 27% | 62.46d? | 0d |  |  |  | 976h | 248h |
| 2 | 1.1 | **Analisis y Diseño** | 34d | 2018-01-02 09:00 A | 2018-02-16 19:00 |  | 76% | 8d | 51d |  |  |  | 176h | 176h |
| 3 | 1.1.1 | Pre-Análisis | 21d | 2018-01-02 09:00 A | 2018-01-30 19:00 A |  | 100% |  |  |  | start no earlier than 2018-01-02 09:00 | Recurso0 | 168h | 168h |
| 4 | 1.1.2 | Analizar solución del proyecto | 1d | 2018-01-31 09:00 A | 2018-01-31 19:00 A | 3 | 100% |  |  |  | start no earlier than 2018-01-31 09:00 | Recurso0 | 8h | 8h |
| 5 | 1.1.3 | **Documentar historias de usuario** | 12d | 2018-02-01 09:00 A | 2018-02-16 19:00 |  | 33% | 8d | 51d |  |  |  |  |  |
| 6 | 1.1.3.1 | **Transmision Importaciones** | 10d | 2018-02-01 09:00 A | 2018-02-14 19:00 |  | 35% | 6.5d | 53d |  |  |  |  |  |
| 7 | 1.1.3.1.1 | **HU Tablero control transmisiones** | 5d | 2018-02-01 09:00 A | 2018-02-07 19:00 |  | 60% | 2d | 58d |  |  |  |  |  |
| 8 | 1.1.3.1.1.1 | Modulo de tablero de control de transmisiones | 2d | 2018-02-01 09:00 A | 2018-02-02 19:00 A | 4 | 100% |  |  |  |  |  |  |  |
| 9 | 1.1.3.1.1.2 | Asignacion de perfiles de visualizacion(LA, Impo, Expo) | 0.5d | 2018-02-05 09:00 A | 2018-02-05 13:00 A | 8 | 100% |  |  |  |  |  |  |  |
| 10 | 1.1.3.1.1.3 | Modulo de pendientes | 0.5d | 2018-02-05 15:00 A | 2018-02-05 19:00 A | 9 | 100% |  |  |  |  |  |  |  |
| 11 | 1.1.3.1.1.4 | Modulo transmision aduanas(Teledespacho, TCI, archivo respuesta) | 2d | 2018-02-06 09:00 | 2018-02-07 19:00 | 10 |  |  | 58d |  |  |  |  |  |
| 12 | 1.1.3.1.2 | **HU Linea Aerea** | 2d | 2018-02-08 09:00 A | 2018-02-09 19:00 |  | 25% | 1.5d | 53d |  |  |  |  |  |
| 13 | 1.1.3.1.2.1 | Consulta itineraios de LA | 0.5d | 2018-02-08 09:00 A | 2018-02-08 13:00 A | 11 | 100% |  |  |  |  |  |  |  |
| 14 | 1.1.3.1.2.2 | Indicador Manifiesto de carga provisional | 0.5d | 2018-02-08 15:00 | 2018-02-08 19:00 | 13 |  |  | 1d | 0d |  |  |  |  |
| 15 | 1.1.3.1.2.3 | Indicador Descarga de la mercancia | 0.5d | 2018-02-09 09:00 | 2018-02-09 13:00 | 14 |  |  | 1d | 0d |  |  |  |  |
| 16 | 1.1.3.1.2.4 | Indicador Bultos Faltos/Sobrantes y Actas ME | 0.5d | 2018-02-09 15:00 | 2018-02-09 19:00 | 15 |  |  | 1d | 0d |  |  |  |  |
| 17 | 1.1.3.1.3 | **HU Deposito Temporal** | 1.5d | 2018-02-12 09:00 | 2018-02-13 13:00 |  |  |  | 53d |  |  |  |  |  |
| 18 | 1.1.3.1.3.1 | Listar información | 0.5d | 2018-02-12 09:00 | 2018-02-12 13:00 | 16 |  |  | 4d | 0d |  |  |  |  |
| 19 | 1.1.3.1.3.2 | Indicador Manifiesto consolidado provisional | 0.5d | 2018-02-12 15:00 | 2018-02-12 19:00 | 18 |  |  | 4d | 0d |  |  |  |  |
| 20 | 1.1.3.1.3.3 | Indicador Manifiesto consolidado complementario | 0.5d | 2018-02-13 09:00 | 2018-02-13 13:00 | 19 |  |  | 4d | 0d |  |  |  |  |
| 21 | 1.1.3.1.4 | **HU Agente de Carga** | 1.5d | 2018-02-13 15:00 | 2018-02-14 19:00 |  |  |  | 53d |  |  |  |  |  |
| 22 | 1.1.3.1.4.1 | Listar información | 0.5d | 2018-02-13 15:00 | 2018-02-13 19:00 | 20 |  |  | 53d | 0d |  |  |  |  |
| 23 | 1.1.3.1.4.2 | Ingreso recepcion mercancia(LCL) | 0.5d | 2018-02-14 09:00 | 2018-02-14 13:00 | 22 |  |  | 53d | 0d |  |  |  |  |
| 24 | 1.1.3.1.4.3 | Indicador Bultos faltos/sobrantes y Actas ME(almacen) | 0.5d | 2018-02-14 15:00 | 2018-02-14 19:00 | 23 |  |  | 53d |  |  |  |  |  |

| ID | WBS | Task | Duration | Start | Finish | Predecessors | Complete | Remaining | Total slack | Free slack | Constraint | Resources | Work | Actual work |
| --- | --- | --- | --- | --- | --- | --- | --- | --- | --- | --- | --- | --- | --- | --- |
| 25 | 1.1.3.2 | **Transmision Exportaciones** | 2d | 2018-02-15 09:00 A | 2018-02-16 19:00 |  | 25% | 1.5d | 51d |  |  |  |  |  |
| 26 | 1.1.3.2.1 | Consulta itinerario LA Exportación | 0.5d | 2018-02-15 09:00 A | 2018-02-15 13:00 A | 24 | 100% |  |  |  |  |  |  |  |
| 27 | 1.1.3.2.2 | HU Módulo de transmision canal | 0.5d | 2018-02-15 15:00 | 2018-02-15 19:00 | 26 |  |  | 1d | 0d |  |  |  |  |
| 28 | 1.1.3.2.3 | HU Módulo de registro de documentso vinculados | 0.5d | 2018-02-16 09:00 | 2018-02-16 13:00 | 27 |  |  | 51d | 0d |  |  |  |  |
| 29 | 1.1.3.2.4 | HU Termino de embarque | 0.5d | 2018-02-16 15:00 | 2018-02-16 19:00 | 28 |  |  | 51d |  |  |  |  |  |
| 30 | 1.2 | **Desarrollo** | 48d? | 2018-02-16 09:00 A | 2018-04-24 19:00 |  | 10% | 43.09d? | 4d |  |  |  | 664h | 72h |
| 31 | 1.2.1 | **Transversales** | 8d | 2018-02-19 09:00 A | 2018-02-28 19:00 A |  | 100% |  |  |  |  |  | 64h | 64h |
| 32 | 1.2.1.1 | Generar ambiente de desarrollo | 3d | 2018-02-19 09:00 A | 2018-02-21 19:00 A | 29 | 100% |  |  |  |  | Recurso1 | 24h | 24h |
| 33 | 1.2.1.2 | Desarrollo de la Arquitectura Tablero | 5d | 2018-02-22 09:00 A | 2018-02-28 19:00 A | 32 | 100% |  |  |  |  | Recurso1 | 40h | 40h |
| 34 | 1.2.2 | **Transmisiones Importaciones** | 40d | 2018-02-16 09:00 A | 2018-04-12 19:00 |  | 1% | 39.4d | 4d |  |  |  | 496h | 8h |
| 35 | 1.2.2.1 | **Desarrollo BD** | 30d | 2018-02-16 09:00 A | 2018-03-29 19:00 |  | 3% | 29d | 4d |  |  |  | 200h | 8h |
| 36 | 1.2.2.1.1 | Crear logica de BD del Tablero | 10d | 2018-02-16 09:00 A | 2018-03-01 19:00 | 27 | 10% | 9d | 4d | 0d |  | Recurso2 | 80h | 8h |
| 37 | 1.2.2.1.2 | Creacion de SP de Mantenimiento Maestros | 5d | 2018-03-02 09:00 | 2018-03-08 19:00 | 36 |  |  | 4d | 0d |  | Recurso2 | 40h |  |
| 38 | 1.2.2.1.3 | Crear logica de BD del Tablero Expo | 5d | 2018-03-09 09:00 | 2018-03-15 19:00 | 37 |  |  | 4d | 0d |  |  |  |  |
| 39 | 1.2.2.1.4 | **Crear logica de BD de integracion** | 4d | 2018-03-16 09:00 | 2018-03-21 19:00 |  |  |  | 4d |  |  |  | 32h |  |
| 40 | 1.2.2.1.4.1 | Integracion con SITRADI | 2d | 2018-03-16 09:00 | 2018-03-19 19:00 | 38 |  |  | 4d | 0d |  | Recurso2 | 16h |  |
| 41 | 1.2.2.1.4.2 | Integracion con HERMES | 2d | 2018-03-20 09:00 | 2018-03-21 19:00 | 40 |  |  | 4d | 0d |  | Recurso2 | 16h |  |
| 42 | 1.2.2.1.5 | **Logica de Indicadores** | 6d | 2018-03-22 09:00 | 2018-03-29 19:00 |  |  |  | 4d |  |  |  | 48h |  |
| 43 | 1.2.2.1.5.1 | Linea aerea | 2d | 2018-03-22 09:00 | 2018-03-23 19:00 | 41 |  |  | 4d | 0d |  | Recurso2 | 16h |  |
| 44 | 1.2.2.1.5.2 | Deposito temporal | 2d | 2018-03-26 09:00 | 2018-03-27 19:00 | 43 |  |  | 4d | 0d |  | Recurso2 | 16h |  |
| 45 | 1.2.2.1.5.3 | Agente de carga | 2d | 2018-03-28 09:00 | 2018-03-29 19:00 | 44 |  |  | 4d | 0d |  | Recurso2 | 16h |  |
| 46 | 1.2.2.2 | **Desarrollo Web** | 31d | 2018-03-01 09:00 | 2018-04-12 19:00 |  |  |  | 0d |  |  |  | 296h |  |
| 47 | 1.2.2.2.1 | Desarrollo del Tablero de control de Impo | 22d | 2018-03-01 09:00 | 2018-03-30 19:00 | 33 |  |  | 0d |  | start no earlier than 2018-02-20 09:00 | Recurso1 | 176h |  |
| 48 | 1.2.2.2.2 | Desarrollo Modulo de registro horas llegada/descarga(GHA) | 5d | 2018-04-02 09:00 | 2018-04-06 19:00 | 47 |  |  | 0d |  |  | Recurso1 | 40h |  |
| 49 | 1.2.2.2.3 | Desarrollo / Modificacion teledespacho | 10d | 2018-03-30 09:00 | 2018-04-12 19:00 | 45 |  |  | 4d | 0d |  | Recurso2 | 80h |  |

| ID | WBS | Task | Duration | Start | Finish | Predecessors | Total slack | Free slack | Constraint | Resources | Work |
| --- | --- | --- | --- | --- | --- | --- | --- | --- | --- | --- | --- |
| 50 | 1.2.3 | **Transmisiones Exportaciones** | 12d? | 2018-04-09 09:00 | 2018-04-24 19:00 |  | 0d |  |  |  | 104h |
| 51 | 1.2.3.1 | Migración transmision de expo | 5d | 2018-04-09 09:00 | 2018-04-13 19:00 | 48 | 0d |  |  | Recurso1 | 40h |
| 52 | 1.2.3.2 | Registro del manifiesto de carga de los documentos vinculados | 3d | 2018-04-13 09:00 | 2018-04-17 19:00 | 49 | 4d | 0d |  | Recurso2 | 24h |
| 53 | 1.2.3.3 | Transmisión del manifiesto de carga consolidado | 5d? | 2018-04-18 09:00 | 2018-04-24 19:00 | 52 | 4d |  |  | Recurso2 | 40h |
| 54 | 1.3 | **Pruebas** | 6d | 2018-04-16 09:00 | 2018-04-23 19:00 |  | 0d |  |  |  | 96h |
| 55 | 1.3.1 | Pruebas unitarias | 3d | 2018-04-16 09:00 | 2018-04-18 19:00 | 51 | 0d |  |  | Recurso1; Resurso2 | 48h |
| 56 | 1.3.2 | Pruebas funcionales | 3d | 2018-04-19 09:00 | 2018-04-23 19:00 | 55 | 0d |  |  | Recurso2; Resurso2 | 48h |
| 57 | 1.4 | **Despliegue** | 5d | 2018-04-23 19:00 | 2018-04-30 19:00 |  | 0d |  |  |  | 40h |
| 58 | 1.4.1 | Pase a produccion | 2d | 2018-04-23 19:00 | 2018-04-26 19:00 | 56 | 0d |  | start no earlier than 2018-04-12 09:00 | Recurso1; Recurso2 | 16h |
| 59 | 1.4.2 | Soporte posproduccion | 2d | 2018-04-27 09:00 | 2018-04-30 19:00 | 58 | 0d |  | start no earlier than 2018-04-13 09:00 | Recurso1; Recurso2 | 24h |
