# Plan Trasmisión

Schedule from MS Project, 2018-01-03 to 2018-05-15, A marks actual dates.
HP

## Calendars

- Calendario Semana Santa 2018: Mon-Fri 09:00-13:00, 15:00-19:00; Sat-Sun off. Exceptions (off unless hours are given): 2018-03-29 to 2018-03-30 (Semana Santas).

## Resources

| Resource |
| --- |
| Itasso |
| Lpeña |
| Yagreda |
| Jsanchez |
| 1 |
| u |

## Schedule

| ID | WBS | Task | Duration | Start | Finish | Predecessors | Complete | Remaining | Total slack | Free slack | Constraint | Resources | Work | Actual work |
| --- | --- | --- | --- | --- | --- | --- | --- | --- | --- | --- | --- | --- | --- | --- |
| 1 | 1 | **Control Tablero Transmisiones** | 93d | 2018-01-03 A | 2018-05-15 |  | 7% | 86.71d | 0d |  |  |  | 1656h | 112h |
| 2 | 1.1 | **Sprint 0 - Analisis** | 28d | 2018-01-03 | 2018-02-09 |  |  |  | 5d |  |  |  | 224h |  |
| 3 | 1.1.1 | Definición de la Arquitectura | 4d | 2018-01-03 | 2018-01-08 |  |  |  | 2d | 0d | start no earlier than 2018-01-03 | Yagreda | 32h |  |
| 4 | 1.1.2 | Análisis | 24d | 2018-01-09 | 2018-02-09 | 3 |  |  | 2d | 0d |  | Yagreda | 192h |  |
| 5 | 1.2 | **Sprint 1 - Preparación** | 7d | 2018-02-12 | 2018-02-20 |  |  |  | 5d |  |  |  | 112h |  |
| 6 | 1.2.1 | Seguir y facilitar desarrollo del producto S1 | 7d | 2018-02-12 | 2018-02-20 | 4 |  |  | 58d |  |  | Yagreda | 56h |  |
| 7 | 1.2.2 | Fuentes consolidadas | 2d | 2018-02-12 | 2018-02-13 | 4 |  |  | 2d | 0d |  | Itasso | 16h |  |
| 8 | 1.2.3 | Control de acceso a usuarios | 2d | 2018-02-14 | 2018-02-15 | 7 |  |  | 2d | 0d |  | Itasso | 16h |  |
| 9 | 1.2.4 | Servicio web de acceso a datos | 2d | 2018-02-16 | 2018-02-19 | 8 |  |  | 2d | 0d |  | Itasso | 16h |  |
| 10 | 1.2.5 | Estructurar tablero de control de transmisiones | 1d | 2018-02-20 | 2018-02-20 | 9 |  |  | 2d | 0d |  | Itasso | 8h |  |
| 11 | 1.3 | **Sprint 2 - Tablero GHA** | 13d | 2018-02-21 | 2018-03-09 |  |  |  | 5d |  |  |  | 208h |  |
| 12 | 1.3.1 | Seguir y facilitar desarrollo del producto S2 | 13d | 2018-02-21 | 2018-03-09 | 10 |  |  | 45d |  |  | Yagreda | 104h |  |
| 13 | 1.3.2 | Visualizar vuelos en el tablero GHA | 5d | 2018-02-21 | 2018-02-27 | 10 |  |  | 2d | 0d |  | Itasso | 40h |  |
| 14 | 1.3.3 | Registrar datos manifiesto de ingreso | 5d | 2018-02-28 | 2018-03-06 | 13 |  |  | 2d | 0d |  | Itasso | 40h |  |
| 15 | 1.3.4 | Registrar datos manifiesto de salida | 3d | 2018-03-07 | 2018-03-09 | 14 |  |  | 2d | 0d |  | Itasso | 24h |  |
| 16 | 1.4 | **Sprint 3 - Tablero GHA** | 13d | 2018-03-12 | 2018-03-28 |  |  |  | 5d |  |  |  | 384h |  |
| 17 | 1.4.1 | Seguir y facilitar desarrollo del producto S3 | 13d | 2018-03-12 | 2018-03-28 | 15 |  |  | 3d | 0d |  | Yagreda | 104h |  |
| 18 | 1.4.2 | Leer buzon correos documentos vinculados | 4d | 2018-03-12 | 2018-03-15 | 15 |  |  | 6d | 0d |  | Yagreda | 32h |  |
| 19 | 1.4.3 | Actualizar proceso documentos vinculados | 5d | 2018-03-16 | 2018-03-22 | 18 |  |  | 4d | 0d |  | Yagreda | 40h |  |
| 20 | 1.4.4 | Formulario de control de acceso de usuario al tablero | 1d | 2018-03-12 | 2018-03-12 | 15 |  |  | 2d | 0d |  | Itasso | 8h |  |
| 21 | 1.4.5 | Como GHA quiero visualizar el listado de mis vuelos | 1d | 2018-03-13 | 2018-03-13 | 20 |  |  | 2d | 0d |  | Itasso | 8h |  |
| 22 | 1.4.6 | Como GHA quiero visualizar mis obligaciones | 1d | 2018-03-14 | 2018-03-14 | 21 |  |  | 2d | 0d |  | Itasso | 8h |  |
| 23 | 1.4.7 | Como GHA quiero visualizar el avance de mis obligaciones | 1d | 2018-03-15 | 2018-03-15 | 22 |  |  | 2d | 0d |  | Itasso | 8h |  |
| 24 | 1.4.8 | Como GHA quiero visualizar el estado de mis obligaciones a través de mis indicadores | 1d | 2018-03-16 | 2018-03-16 | 23 |  |  | 2d | 0d |  | Lpeña | 8h |  |
| 25 | 1.4.9 | Como GHA quiero ller el ingreso de la fecha de llegada de un vuelo por Web Aduana | 1d | 2018-03-19 | 2018-03-19 | 24 |  |  | 2d | 0d |  | Lpeña | 8h |  |
| 26 | 1.4.10 | Como GHA quiero capturar y registrar el ingreso de la fecha de llegada de un vuelo | 1d | 2018-03-20 | 2018-03-20 | 25 |  |  | 2d | 0d |  | Lpeña | 8h |  |
| 27 | 1.4.11 | Como GHA quiero leer el ingreso de la fecha del termino de descarga por Web Aduana | 1d | 2018-03-21 | 2018-03-21 | 26 |  |  | 2d | 0d |  | Itasso | 8h |  |
| 28 | 1.4.12 | Como GHA quiero capturar y almacenar el "registro de la fecha de termino de descarga" | 1d | 2018-03-22 | 2018-03-22 | 27 |  |  | 2d | 0d |  | Itasso | 8h |  |
| 29 | 1.4.13 | Como GHA quiero leer el ingreso del termino de embarque por Web Aduana | 1d | 2018-03-23 | 2018-03-23 | 28 |  |  | 2d | 0d |  | Itasso | 8h |  |
| 30 | 1.4.14 | Como GHA quiero capturar y almacenar el "registro de término de embarque" | 1d | 2018-03-26 | 2018-03-26 | 29 |  |  | 2d | 0d |  | Itasso | 8h |  |
| 31 | 1.4.15 | Como GHA quiero leer el ingreso de la fecha de autorización de la carga via Web Aduana | 1d | 2018-03-27 | 2018-03-27 | 30 |  |  | 1d | 0d |  | Itasso | 8h |  |
| 32 | 1.4.16 | Como GHA quiero capturar y almacenar e "registro de autorización de la carga" | 1d | 2018-03-28 | 2018-03-28 | 31 |  |  | 32d |  |  | Itasso | 8h |  |
| 33 | 1.4.17 | Transmisión de archivos a Aduanas por Teledespacho 1 | 4d | 2018-03-23 | 2018-03-28 | 19 |  |  | 4d | 0d |  | Lpeña | 32h |  |
| 34 | 1.4.18 | Pruebas Unitarias Tablero Gestion GHA | 3d | 2018-03-16 | 2018-03-20 | 23 |  |  | 32d | 0d |  | Itasso | 24h |  |
| 35 | 1.4.19 | Pruebas Funcionales Tablero Gestion GHA | 6d | 2018-03-21 | 2018-03-28 | 34 |  |  | 32d |  |  | Jsanchez | 48h |  |

| ID | WBS | Task | Duration | Start | Finish | Predecessors | Complete | Remaining | Total slack | Free slack | Constraint | Resources | Work | Actual work |
| --- | --- | --- | --- | --- | --- | --- | --- | --- | --- | --- | --- | --- | --- | --- |
| 36 | 1.5 | **Sprint 4 - Tablero IMPO** | 20d | 2018-04-02 A | 2018-04-27 |  | 23% | 15.33d | 4d |  |  |  | 480h | 112h |
| 37 | 1.5.1 | Seguir y facilitar desarrollo del producto S4 | 20d | 2018-04-02 | 2018-04-27 | 17 |  |  | 3d | 0d | start no earlier than 2018-04-02 | Yagreda | 160h |  |
| 38 | 1.5.2 | Transmisión de archivos a Aduanas por Teledespacho 2 | 5d | 2018-04-02 A | 2018-04-06 A | 33 | 100% |  |  |  | start no earlier than 2018-04-02 | Lpeña | 40h | 40h |
| 39 | 1.5.3 | Acceso de archivos a Aduanas por Teledespacho 2 | 5d | 2018-04-09 A | 2018-04-13 A | 38 | 100% |  |  |  |  | Lpeña | 40h | 40h |
| 40 | 1.5.4 | Generar Visor de Tranmisiones Teledespacho Transportista | 4d | 2018-04-16 | 2018-04-19 | 39 |  |  | 4d | 0d |  | Lpeña | 32h |  |
| 41 | 1.5.5 | Generar Visor de Tranmisiones Teledespacho Terminal | 3d | 2018-04-20 | 2018-04-24 | 40 |  |  | 4d | 0d |  | Lpeña | 24h |  |
| 42 | 1.5.6 | Generar Visor de Tranmisiones Teledespacho Agente | 3d | 2018-04-25 | 2018-04-27 | 41 |  |  | 4d | 0d |  | Lpeña | 24h |  |
| 43 | 1.5.7 | Acceder Tablero y Visualizar el listado de mis vuelos | 1d | 2018-04-02 A | 2018-04-02 A | 32 | 100% |  |  |  | start no earlier than 2018-04-02 | Itasso | 8h | 8h |
| 44 | 1.5.8 | Visualizar el listado de mis obligaciones por vuelo | 1d | 2018-04-03 A | 2018-04-03 A | 43 | 100% |  |  |  |  | Itasso | 8h | 8h |
| 45 | 1.5.9 | Visualizar el listado de mis guías por vuelo | 1d | 2018-04-04 A | 2018-04-04 A | 44 | 100% |  |  |  |  | Itasso | 8h | 8h |
| 46 | 1.5.10 | Visualizar el listado de mis obligaciones por guía de un vuelo | 1d | 2018-04-05 A | 2018-04-05 A | 45 | 100% |  |  |  |  | Itasso | 8h | 8h |
| 47 | 1.5.11 | Visualizar el avance de mis obligaciones por guía de un vuelo | 1d | 2018-04-06 | 2018-04-06 | 46 |  |  | 0d |  |  | Itasso | 8h |  |
| 48 | 1.5.12 | Visualizar el estado de mis obligaciones de una guía a través de mis indicadores | 1d | 2018-04-09 | 2018-04-09 | 47 |  |  | 0d |  |  | Itasso | 8h |  |
| 49 | 1.5.13 | Visualizar el avance de mis obligaciones por vuelo | 1d | 2018-04-10 | 2018-04-10 | 48 |  |  | 0d |  |  | Itasso | 8h |  |
| 50 | 1.5.14 | Visualizar el estado de mis obligaciones por vuelo a través de mis indicadores | 1d | 2018-04-11 | 2018-04-11 | 49 |  |  | 0d |  |  | Itasso | 8h |  |
| 51 | 1.5.15 | Asignar un responsable por vuelo | 1d | 2018-04-12 | 2018-04-12 | 50 |  |  | 0d |  |  | Itasso | 8h |  |
| 52 | 1.5.16 | Re asignar un responsable por vuelo | 1d | 2018-04-13 | 2018-04-13 | 51 |  |  | 0d |  |  | Itasso | 8h |  |
| 53 | 1.5.17 | Visualizar los errores de mis transmisiones por guía de un vuelo | 1d | 2018-04-16 | 2018-04-16 | 52 |  |  | 0d |  |  | Itasso | 8h |  |
| 54 | 1.5.18 | Cerrar un grupo de procesos de una guía | 1d | 2018-04-17 | 2018-04-17 | 53 |  |  | 0d |  |  | Itasso | 8h |  |
| 55 | 1.5.19 | Cierre de vuelo por dueño de vuelo | 1d | 2018-04-18 | 2018-04-18 | 54 |  |  | 0d |  |  | Itasso | 8h |  |
| 56 | 1.5.20 | Visualización de vuelos por grupo de aerolíneas | 1d | 2018-04-19 | 2018-04-19 | 55 |  |  | 0d |  |  | Itasso | 8h |  |
| 57 | 1.5.21 | Visualización de vuelos según llegada de vuelo | 1d | 2018-04-20 | 2018-04-20 | 56 |  |  | 0d |  |  | Itasso | 8h |  |
| 58 | 1.5.22 | Pruebas Unitarias Tablero Gestion IMPO | 1d | 2018-04-23 | 2018-04-23 | 57 |  |  | 0d |  |  | Itasso | 8h |  |
| 59 | 1.5.23 | Pruebas Funcionales Tablero Gestion IMPO | 4d | 2018-04-24 | 2018-04-27 | 58 |  |  | 0d |  |  | Jsanchez | 32h |  |

| ID | WBS | Task | Duration | Start | Finish | Predecessors | Total slack | Free slack | Resources | Work |
| --- | --- | --- | --- | --- | --- | --- | --- | --- | --- | --- |
| 60 | 1.6 | **Sprint 5 - Tablero EXPO** | 8d | 2018-04-30 | 2018-05-09 |  | 0d |  |  | 176h |
| 61 | 1.6.1 | Seguir y facilitar desarrollo del producto S5 | 6d | 2018-04-30 | 2018-05-07 | 37 | 3d | 0d | Yagreda | 48h |
| 62 | 1.6.2 | Visualizar listado de guias y responsabilidades EXPO | 2d | 2018-04-30 | 2018-05-01 | 59 | 0d |  | Itasso | 16h |
| 63 | 1.6.3 | Generar archivos de Transmision Agente | 3d | 2018-04-30 | 2018-05-02 | 42 | 4d | 0d | Lpeña | 24h |
| 64 | 1.6.4 | Generar Visor de Tranmisiones Teledespacho Agente | 3d | 2018-05-03 | 2018-05-07 | 63 | 4d | 0d | Lpeña | 24h |
| 65 | 1.6.5 | Modificacion del Visor de Transmisiones del Sitradi | 2d | 2018-05-08 | 2018-05-09 | 64 | 4d |  | Lpeña | 16h |
| 66 | 1.6.6 | Visualizar indicadores del tablero Expo | 1d | 2018-05-02 | 2018-05-02 | 62 | 0d |  | Itasso | 8h |
| 67 | 1.6.7 | Visualizar Avance del Tablero Expo | 1d | 2018-05-03 | 2018-05-03 | 66 | 0d |  | Itasso | 8h |
| 68 | 1.6.8 | Visualizar indicadores del tablero Expo | 1d | 2018-05-04 | 2018-05-04 | 67 | 0d |  | Itasso | 8h |
| 69 | 1.6.9 | Pruebas Unitarias Tablero Gestion EXPO | 1d | 2018-05-07 | 2018-05-07 | 68 | 0d |  | Itasso | 8h |
| 70 | 1.6.10 | Pruebas Funcionales Tablero Gestion EXPO | 2d | 2018-05-08 | 2018-05-09 | 69 | 4d |  | Jsanchez | 16h |
| 71 | 1.7 | **Sprint 6 - Pase a PRD** | 6d | 2018-05-08 | 2018-05-15 |  | 0d |  |  | 72h |
| 72 | 1.7.1 | Preparar cierre del proyecto | 3d | 2018-05-08 | 2018-05-10 | 61 | 3d |  | Yagreda | 24h |
| 73 | 1.7.2 | Afinar diseño/funcionalidad del tablero | 3d | 2018-05-08 | 2018-05-10 | 69 | 0d |  | Itasso | 24h |
| 74 | 1.7.3 | Ingresar y/o actualizar BD de tablas maestras | 1d | 2018-05-11 | 2018-05-11 | 73 | 0d |  | Itasso | 8h |
| 75 | 1.7.4 | Pase a Produccion Tablero (GHA, IMPO, EXPO) | 1d | 2018-05-14 | 2018-05-14 | 74 | 0d |  | Yagreda | 8h |
| 76 | 1.7.5 | Seguimiento y control de calidad del Tablero | 1d | 2018-05-15 | 2018-05-15 | 75 | 0d |  | Jsanchez | 8h |
