# Cronograma2

Schedule from MS Project, 2018-02-12 to 2018-05-09, A marks actual dates.

## Calendars

- Estándar: Mon-Fri 09:00-13:00, 15:00-19:00; Sat-Sun off. Exceptions (off unless hours are given): 2018-03-29 to 2018-03-30 (Semana santa).

## Resources

| Resource |
| --- |
| Yery |
| Ivan |
| Recurso1 |
| Inva |
| Miguel |
| Jimy |

## Schedule

| ID | WBS | Task | Duration | Start | Finish | Predecessors | Complete | Remaining | Baseline start | Baseline finish | Baseline duration | Total slack | Resources | Work | Actual work |
| --- | --- | --- | --- | --- | --- | --- | --- | --- | --- | --- | --- | --- | --- | --- | --- |
| 1 | 1 | **Control Tablero Transmisiones** | 61d | 2018-02-12 A | 2018-05-09 |  | 50% | 30.48d | 2018-02-12 | 2018-05-08 | 60d | 0d |  | 1140h | 530.4h |
| 2 | 1.1 | **Sprint 1** | 7d | 2018-02-12 A | 2018-02-20 A |  | 100% |  | 2018-02-12 | 2018-02-20 | 7d |  |  | 112h | 112h |
| 3 | 1.1.1 | Seguir y facilitar desarrollo del producto | 7d | 2018-02-12 A | 2018-02-20 A |  | 100% |  | 2018-02-12 | 2018-02-20 | 7d |  | Yery | 56h | 56h |
| 4 | 1.1.2 | Fuentes consolidadas | 2d | 2018-02-12 A | 2018-02-13 A |  | 100% |  | 2018-02-12 | 2018-02-13 | 2d |  | Ivan | 16h | 16h |
| 5 | 1.1.3 | Control de acceso a usuarios | 2d | 2018-02-14 A | 2018-02-15 A | 4 | 100% |  | 2018-02-14 | 2018-02-15 | 2d |  | Ivan | 16h | 16h |
| 6 | 1.1.4 | Servicio web de acceso a datos | 2d | 2018-02-16 A | 2018-02-19 A | 5 | 100% |  | 2018-02-16 | 2018-02-19 | 2d |  | Ivan | 16h | 16h |
| 7 | 1.1.5 | Estructurar tablero de control de transmisiones | 1d | 2018-02-20 A | 2018-02-20 A | 6 | 100% |  | 2018-02-20 | 2018-02-20 | 1d |  | Ivan | 8h | 8h |
| 8 | 1.2 | **Sprint 2** | 13d | 2018-02-21 A | 2018-03-09 A |  | 100% |  | 2018-02-21 | 2018-03-09 | 13d |  |  | 208h | 208h |
| 9 | 1.2.1 | Seguir y facilitar desarrollo del producto | 13d | 2018-02-21 A | 2018-03-09 A | 7 | 100% |  | 2018-02-21 | 2018-03-09 | 13d |  | Yery | 104h | 104h |
| 10 | 1.2.2 | Visualizar vuelos en el tablero GHA | 5d | 2018-02-21 A | 2018-02-27 A | 7 | 100% |  | 2018-02-21 | 2018-02-27 | 5d |  | Ivan | 40h | 40h |
| 11 | 1.2.3 | Registrar datos manifiesto de ingreso | 5d | 2018-02-28 A | 2018-03-06 A | 10 | 100% |  | 2018-02-28 | 2018-03-06 | 5d |  | Ivan | 40h | 40h |
| 12 | 1.2.4 | Registrar datos manifiesto de salida | 3d | 2018-03-07 A | 2018-03-09 A | 11, 17 | 100% |  | 2018-03-07 | 2018-03-09 | 3d |  | Ivan | 24h | 24h |
| 13 | 1.3 | **Sprint 3** | 31d | 2018-02-12 A | 2018-03-26 |  | 81% | 5.91d | 2018-03-12 | 2018-03-23 | 10d | 30d |  | 260h | 210.4h |
| 14 | 1.3.1 | Seguir y facilitar desarrollo del producto | 10d | 2018-03-12 A | 2018-03-23 A | 12 | 100% |  | 2018-03-12 | 2018-03-23 | 10d |  | Yery | 80h | 80h |
| 15 | 1.3.2 | Leer buzon correos documentos vinculados | 4d | 2018-03-12 A | 2018-03-15 A | 12 | 100% |  | 2018-03-12 | 2018-03-15 | 4d |  | Yery | 32h | 32h |
| 16 | 1.3.3 | Actualizar proceso documentos vinculados | 5d | 2018-03-16 A | 2018-03-22 A | 15 | 100% |  | 2018-03-16 | 2018-03-21 | 4d |  | Yery | 40h | 40h |
| 17 | 1.3.4 | Formulario de control de acceso de usuario al tablero | 1d | 2018-03-12 A | 2018-03-12 |  | 50% | 0.5d |  |  |  | 0d | Ivan | 8h | 4h |
| 18 | 1.3.5 | Como GHA quiero visualizar el listado de mis vuelos | 1d | 2018-03-12 A | 2018-03-13 | 17 | 50% | 0.5d |  |  |  | 0d | Ivan | 8h | 4h |
| 19 | 1.3.6 | Como GHA quiero visualizar mis obligaciones | 1d | 2018-03-12 A | 2018-03-13 | 18 | 50% | 0.5d |  |  |  | 0d | Ivan | 8h | 4h |
| 20 | 1.3.7 | Como GHA quiero visualizar el avance de mis obligaciones | 1d | 2018-03-12 A | 2018-03-14 | 19 | 50% | 0.5d |  |  |  | 0d | Ivan | 8h | 4h |
| 21 | 1.3.8 | Como GHA quiero visualizar el estado de mis obligaciones a través de mis indicadores | 1d | 2018-03-12 A | 2018-03-14 | 20 | 50% | 0.5d |  |  |  | 0d | Ivan | 8h | 4h |
| 22 | 1.3.9 | Como GHA quiero capturar y registrar el ingreso de la fecha de llegada de un vuelo | 1d | 2018-02-12 A | 2018-03-15 | 21 | 50% | 0.5d |  |  |  | 0d | Ivan | 8h | 4h |
| 23 | 1.3.10 | Como GHA quiero capturar y almacenar el screen del "registro de llegada de un vuelo" | 1d | 2018-03-12 A | 2018-03-15 | 22 | 50% | 0.5d |  |  |  | 0d | Ivan | 8h | 4h |
| 24 | 1.3.11 | Como GHA quiero capturar y registrar el ingreso de la fecha del termino de descarga | 1d | 2018-03-12 A | 2018-03-16 | 23 | 50% | 0.5d |  |  |  | 0d | Ivan | 8h | 4h |
| 25 | 1.3.12 | Como GHA quiero capturar y almacenar el screen del "registro de la fecha de termino de descarga" | 1d | 2018-03-12 A | 2018-03-16 | 24 | 50% | 0.5d |  |  |  | 0d | Ivan | 8h | 4h |
| 26 | 1.3.13 | Como GHA quiero capturar y registrar el ingreso del termino de embarque | 1d | 2018-03-12 A | 2018-03-19 | 25 | 50% | 0.5d |  |  |  | 35.5d | Ivan | 8h | 4h |
| 27 | 1.3.14 | Como GHA quiero capturar y almacenar el screen del "registro de término de embarque" | 0.5d | 2018-03-12 A | 2018-03-12 A | 26 | 100% |  |  |  |  |  | Ivan | 4h | 4h |
| 28 | 1.3.15 | Como GHA quiero capturar y registrar el ingreso de la fecha de autorización de la carga | 0.5d | 2018-02-12 A | 2018-02-12 A | 27 | 100% |  |  |  |  |  | Ivan | 4h | 4h |
| 29 | 1.3.16 | Como GHA quiero capturar y almacenar el screen del "registro de autorización de la carga" | 0.5d | 2018-02-12 A | 2018-02-12 A | 28 | 100% |  |  |  |  |  | Ivan | 4h | 4h |
| 30 | 1.3.17 | Transmitir vía webservice 1 | 2d | 2018-03-23 A | 2018-03-26 | 16 | 40% | 1.2d | 2018-03-22 | 2018-03-23 | 2d | 0d | Jimy | 16h | 6.4h |

| ID | WBS | Task | Duration | Start | Finish | Predecessors | Baseline start | Baseline finish | Baseline duration | Total slack | Resources | Work |
| --- | --- | --- | --- | --- | --- | --- | --- | --- | --- | --- | --- | --- |
| 31 | 1.4 | **Sprint 4** | 10d | 2018-03-27 | 2018-04-11 |  | 2018-03-26 | 2018-04-10 | 10d | 0d |  | 160h |
| 32 | 1.4.1 | Seguir y facilitar desarrollo del producto | 10d | 2018-03-27 | 2018-04-11 | 30 | 2018-03-26 | 2018-04-10 | 10d | 20d | Yery | 80h |
| 33 | 1.4.2 | Visualizar listado de guias y responsabilidades IMPO | 5d | 2018-03-27 | 2018-04-04 | 30 | 2018-03-26 | 2018-04-03 | 5d | 0d | Ivan | 40h |
| 34 | 1.4.3 | Transmitir vía webservice 2 | 5d | 2018-04-05 | 2018-04-11 | 33 | 2018-04-04 | 2018-04-10 | 5d | 0d | Miguel | 40h |
| 35 | 1.5 | **Sprint 5** | 10d | 2018-04-12 | 2018-04-25 |  | 2018-04-11 | 2018-04-24 | 10d | 0d |  | 160h |
| 36 | 1.5.1 | Seguir y facilitar desarrollo del producto | 10d | 2018-04-12 | 2018-04-25 | 34 | 2018-04-11 | 2018-04-24 | 10d | 10d | Yery | 80h |
| 37 | 1.5.2 | Visualizar listado de guias y responsabilidades EXPO | 2d | 2018-04-12 | 2018-04-13 | 34 | 2018-04-11 | 2018-04-12 | 2d | 0d | Ivan | 16h |
| 38 | 1.5.3 | Visualizar indicadores del tablero GHA | 2d | 2018-04-16 | 2018-04-17 | 37 | 2018-04-13 | 2018-04-16 | 2d | 0d | Ivan | 16h |
| 39 | 1.5.4 | Visualizar indicadores del tablero IMPO | 2d | 2018-04-18 | 2018-04-19 | 38 | 2018-04-17 | 2018-04-18 | 2d | 0d | Ivan | 16h |
| 40 | 1.5.5 | Visualizar indicadores del tablero EXPO | 1d | 2018-04-20 | 2018-04-20 | 39 | 2018-04-19 | 2018-04-19 | 1d | 0d | Ivan | 8h |
| 41 | 1.5.6 | Modificar estado del vuelo | 1d | 2018-04-23 | 2018-04-23 | 40 | 2018-04-20 | 2018-04-20 | 1d | 0d | Miguel | 8h |
| 42 | 1.5.7 | Modificar estado de las guias | 1d | 2018-04-24 | 2018-04-24 | 41 | 2018-04-23 | 2018-04-23 | 1d | 0d | Miguel | 8h |
| 43 | 1.5.8 | Modificar estado de las responsabilidades | 1d | 2018-04-25 | 2018-04-25 | 42 | 2018-04-24 | 2018-04-24 | 1d | 0d | Miguel | 8h |
| 44 | 1.6 | **Sprint 6** | 10d | 2018-04-26 | 2018-05-09 |  | 2018-04-25 | 2018-05-08 | 10d | 0d |  | 240h |
| 45 | 1.6.1 | Seguir y facilitar desarrollo del producto | 10d | 2018-04-26 | 2018-05-09 | 43 | 2018-04-25 | 2018-05-08 | 10d | 0d | Yery | 80h |
| 46 | 1.6.2 | Afinar diseño del tablero | 3d | 2018-04-26 | 2018-04-30 | 43 | 2018-04-25 | 2018-04-27 | 3d | 0d | Ivan; Miguel | 48h |
| 47 | 1.6.3 | Ingresar y/o actualizar bd de tablas maestras | 3d | 2018-05-01 | 2018-05-03 | 46 | 2018-04-30 | 2018-05-02 | 3d | 0d | Ivan; Miguel | 48h |
| 48 | 1.6.4 | Realizar pruebas funcionales | 4d | 2018-05-04 | 2018-05-09 | 47 | 2018-05-03 | 2018-05-08 | 4d | 0d | Ivan; Miguel | 64h |
