# Cronograma2

Schedule from MS Project, 2018-02-12 to 2018-05-28, A marks actual dates.

## Calendars

- Estándar: Mon-Fri 09:00-13:00, 15:00-19:00; Sat-Sun off. Exceptions (off unless hours are given): 2018-03-29 to 2018-03-30 (Semana santa).

## Resources

| Resource |
| --- |
| Yery |
| Ivan |
| Recurso1 |
| Inva |
| Miguel |
| Jimy |
| Luis |
| Inan |
| Jimmy |

## Schedule

| ID | WBS | Task | Duration | Start | Finish | Predecessors | Complete | Remaining | Baseline start | Baseline finish | Baseline duration | Total slack | Resources | Work | Actual work |
| --- | --- | --- | --- | --- | --- | --- | --- | --- | --- | --- | --- | --- | --- | --- | --- |
| 1 | 1 | **Control Tablero Transmisiones** | 74d | 2018-02-12 A | 2018-05-28 |  | 53% | 34.92d | 2018-02-12 | 2018-05-11 | 63d | 0d |  | 1336h | 705.6h |
| 2 | 1.1 | **Sprint 1** | 7d | 2018-02-12 A | 2018-02-20 A |  | 100% |  | 2018-02-12 | 2018-02-20 | 7d |  |  | 112h | 112h |
| 3 | 1.1.1 | Seguir y facilitar desarrollo del producto S1 | 7d | 2018-02-12 A | 2018-02-20 A |  | 100% |  | 2018-02-12 | 2018-02-20 | 7d |  | Yery | 56h | 56h |
| 4 | 1.1.2 | Fuentes consolidadas | 2d | 2018-02-12 A | 2018-02-13 A |  | 100% |  | 2018-02-12 | 2018-02-13 | 2d |  | Ivan | 16h | 16h |
| 5 | 1.1.3 | Control de acceso a usuarios | 2d | 2018-02-14 A | 2018-02-15 A | 4 | 100% |  | 2018-02-14 | 2018-02-15 | 2d |  | Ivan | 16h | 16h |
| 6 | 1.1.4 | Servicio web de acceso a datos | 2d | 2018-02-16 A | 2018-02-19 A | 5 | 100% |  | 2018-02-16 | 2018-02-19 | 2d |  | Ivan | 16h | 16h |
| 7 | 1.1.5 | Estructurar tablero de control de transmisiones | 1d | 2018-02-20 A | 2018-02-20 A | 6 | 100% |  | 2018-02-20 | 2018-02-20 | 1d |  | Ivan | 8h | 8h |
| 8 | 1.2 | **Sprint 2** | 13d | 2018-02-21 A | 2018-03-09 A |  | 100% |  | 2018-02-21 | 2018-03-09 | 13d |  |  | 208h | 208h |
| 9 | 1.2.1 | Seguir y facilitar desarrollo del producto S2 | 13d | 2018-02-21 A | 2018-03-09 A | 7 | 100% |  | 2018-02-21 | 2018-03-09 | 13d |  | Yery | 104h | 104h |
| 10 | 1.2.2 | Visualizar vuelos en el tablero GHA | 5d | 2018-02-21 A | 2018-02-27 A | 7 | 100% |  | 2018-02-21 | 2018-02-27 | 5d |  | Ivan | 40h | 40h |
| 11 | 1.2.3 | Registrar datos manifiesto de ingreso | 5d | 2018-02-28 A | 2018-03-06 A | 10 | 100% |  | 2018-02-28 | 2018-03-06 | 5d |  | Ivan | 40h | 40h |
| 12 | 1.2.4 | Registrar datos manifiesto de salida | 3d | 2018-03-07 A | 2018-03-09 A | 11, 17 | 100% |  | 2018-03-07 | 2018-03-09 | 3d |  | Ivan | 24h | 24h |
| 13 | 1.3 | **Sprint 3** | 33d | 2018-02-12 A | 2018-03-28 A |  | 100% |  | 2018-02-12 | 2018-03-28 | 33d |  |  | 360h | 360h |
| 14 | 1.3.1 | Seguir y facilitar desarrollo del producto S3 | 13d | 2018-03-12 A | 2018-03-28 A | 12 | 100% |  | 2018-03-12 | 2018-03-28 | 13d |  | Yery | 104h | 104h |
| 15 | 1.3.2 | Leer buzon correos documentos vinculados | 4d | 2018-03-12 A | 2018-03-15 A | 12 | 100% |  | 2018-03-12 | 2018-03-15 | 4d |  | Yery | 32h | 32h |
| 16 | 1.3.3 | Actualizar proceso documentos vinculados | 5d | 2018-03-16 A | 2018-03-22 A | 15 | 100% |  | 2018-03-16 | 2018-03-22 | 5d |  | Yery | 40h | 40h |
| 17 | 1.3.4 | Formulario de control de acceso de usuario al tablero | 1d | 2018-03-12 A | 2018-03-12 A |  | 100% |  | 2018-03-12 | 2018-03-12 | 1d |  | Ivan | 8h | 8h |
| 18 | 1.3.5 | Como GHA quiero visualizar el listado de mis vuelos | 1d | 2018-03-12 A | 2018-03-13 A | 17 | 100% |  | 2018-03-12 | 2018-03-13 | 1d |  | Ivan | 8h | 8h |
| 19 | 1.3.6 | Como GHA quiero visualizar mis obligaciones | 1d | 2018-03-12 A | 2018-03-13 A | 18 | 100% |  | 2018-03-12 | 2018-03-13 | 1d |  | Ivan | 8h | 8h |
| 20 | 1.3.7 | Como GHA quiero visualizar el avance de mis obligaciones | 1d | 2018-03-12 A | 2018-03-14 A | 19 | 100% |  | 2018-03-12 | 2018-03-14 | 1d |  | Ivan | 8h | 8h |
| 21 | 1.3.8 | Como GHA quiero visualizar el estado de mis obligaciones a través de mis indicadores | 1d | 2018-03-12 A | 2018-03-14 A | 20 | 100% |  | 2018-03-12 | 2018-03-14 | 1d |  | Ivan | 8h | 8h |
| 22 | 1.3.9 | Como GHA quiero ller el ingreso de la fecha de llegada de un vuelo por Web Aduana | 1d | 2018-02-12 A | 2018-03-15 A | 21 | 100% |  | 2018-02-12 | 2018-03-15 | 1d |  | Ivan | 8h | 8h |
| 23 | 1.3.10 | Como GHA quiero capturar y registrar el ingreso de la fecha de llegada de un vuelo | 1d | 2018-03-12 A | 2018-03-15 A | 22 | 100% |  | 2018-03-12 | 2018-03-15 | 1d |  | Ivan | 8h | 8h |
| 24 | 1.3.11 | Como GHA quiero leer el ingreso de la fecha del termino de descarga por Web Aduana | 1d | 2018-03-12 A | 2018-03-16 A | 23 | 100% |  | 2018-03-12 | 2018-03-16 | 1d |  | Ivan | 8h | 8h |
| 25 | 1.3.12 | Como GHA quiero capturar y almacenar el "registro de la fecha de termino de descarga" | 1d | 2018-03-12 A | 2018-03-16 A | 24 | 100% |  | 2018-03-12 | 2018-03-16 | 1d |  | Ivan | 8h | 8h |
| 26 | 1.3.13 | Como GHA quiero leer el ingreso del termino de embarque por Web Aduana | 1d | 2018-03-12 A | 2018-03-19 A | 25 | 100% |  | 2018-03-12 | 2018-03-19 | 1d |  | Ivan | 8h | 8h |
| 27 | 1.3.14 | Como GHA quiero capturar y almacenar el "registro de término de embarque" | 1d | 2018-03-12 A | 2018-03-19 A | 26 | 100% |  | 2018-03-12 | 2018-03-19 | 1d |  | Ivan | 8h | 8h |
| 28 | 1.3.15 | Como GHA quiero leer el ingreso de la fecha de autorización de la carga via Web Aduana | 1d | 2018-02-12 A | 2018-03-20 A | 27 | 100% |  | 2018-02-12 | 2018-03-20 | 1d |  | Ivan | 8h | 8h |
| 29 | 1.3.16 | Como GHA quiero capturar y almacenar e "registro de autorización de la carga" | 7d | 2018-02-12 A | 2018-03-28 A | 28 | 100% |  | 2018-02-12 | 2018-03-28 | 7d |  | Ivan | 56h | 56h |
| 30 | 1.3.17 | Transmisión de archivos a Aduanas por Teledespacho 1 | 4d | 2018-03-23 A | 2018-03-28 A | 16 | 100% |  | 2018-03-23 | 2018-03-28 | 4d |  | Luis | 32h | 32h |

| ID | WBS | Task | Duration | Start | Finish | Predecessors | Complete | Remaining | Baseline start | Baseline finish | Baseline duration | Total slack | Free slack | Resources | Work | Actual work |
| --- | --- | --- | --- | --- | --- | --- | --- | --- | --- | --- | --- | --- | --- | --- | --- | --- |
| 31 | 1.4 | **Sprint 4** | 15d | 2018-04-09 A | 2018-04-27 |  | 6% | 14.04d | 2018-04-09 | 2018-04-27 | 10d | 0d |  |  | 400h | 25.6h |
| 32 | 1.4.1 | Seguir y facilitar desarrollo del producto S4 | 15d | 2018-04-09 A | 2018-04-27 | 14 | 7% | 14d | 2018-04-02 | 2018-04-13 | 10d | 0d |  | Yery | 120h | 8h |
| 33 | 1.4.2 | Seguimiento y control de calidad del Tablero | 10d | 2018-04-09 A | 2018-04-20 |  | 5% | 9.5d | 2018-04-12 | 2018-04-26 | 0d | 5d |  | Jimy | 80h | 4h |
| 34 | 1.4.3 | Transmisión de archivos a Aduanas por Teledespacho 2 | 10d | 2018-04-09 A | 2018-04-20 | 30 |  | 10d | 2018-04-09 | 2018-04-20 | 10d | 5d |  | Luis | 80h |  |
| 35 | 1.4.4 | Acceder Tablero y Visualizar el listado de mis vuelos | 1d | 2018-04-09 A | 2018-04-09 A | 29 | 100% |  | 2018-04-02 | 2018-04-02 | 1d |  |  | Ivan | 8h | 8h |
| 36 | 1.4.5 | Visualizar el listado de mis obligaciones por vuelo | 1d | 2018-04-10 A | 2018-04-10 | 35 | 70% | 0.3d | 2018-04-03 | 2018-04-03 | 1d | 0d |  | Ivan | 8h | 5.6h |
| 37 | 1.4.6 | Visualizar el listado de mis guías por vuelo | 0.5d | 2018-04-11 | 2018-04-11 | 36 |  |  | 2018-04-04 | 2018-04-04 | 1d | 0d |  | Ivan | 4h |  |
| 38 | 1.4.7 | Visualizar el listado de mis obligaciones por guía de un vuelo | 2d | 2018-04-11 | 2018-04-13 | 37 |  |  | 2018-04-05 | 2018-04-05 | 1d | 0d |  | Ivan | 16h |  |
| 39 | 1.4.8 | Visualizar el avance de mis obligaciones por guía de un vuelo | 2d | 2018-04-13 | 2018-04-17 | 38 |  |  | 2018-04-06 | 2018-04-06 | 1d | 0d |  | Ivan | 16h |  |
| 40 | 1.4.9 | Visualizar el estado de mis obligaciones de una guía a través de mis indicadores | 1d | 2018-04-17 | 2018-04-18 | 39 |  |  | 2018-04-09 | 2018-04-09 | 1d | 0d |  | Ivan | 8h |  |
| 41 | 1.4.10 | Visualizar el avance de mis obligaciones por vuelo | 0.5d | 2018-04-18 | 2018-04-18 | 40 |  |  | 2018-04-10 | 2018-04-10 | 1d | 0d |  | Ivan | 4h |  |
| 42 | 1.4.11 | Visualizar el estado de mis obligaciones por vuelo a través de mis indicadores | 0.5d | 2018-04-19 | 2018-04-19 | 41 |  |  | 2018-04-11 | 2018-04-11 | 1d | 0d |  | Ivan | 4h |  |
| 43 | 1.4.12 | Asignar un responsable por vuelo | 1d | 2018-04-19 | 2018-04-20 | 42 |  |  | 2018-04-12 | 2018-04-12 | 0.5d | 0d |  | Ivan | 8h |  |
| 44 | 1.4.13 | Re asignar un responsable por vuelo | 1d | 2018-04-20 | 2018-04-23 | 43 |  |  | 2018-04-12 | 2018-04-12 | 0.5d | 0d |  | Ivan | 8h |  |
| 45 | 1.4.14 | Visualizar los errores de mis transmisiones por guía de un vuelo | 2d | 2018-04-23 | 2018-04-25 | 44 |  |  | 2018-04-13 | 2018-04-13 | 0.5d | 0d |  | Ivan | 16h |  |
| 46 | 1.4.15 | Cerrar un grupo de procesos de una guía | 0.5d | 2018-04-25 | 2018-04-25 | 45 |  |  |  |  |  | 0d |  | Ivan | 4h |  |
| 47 | 1.4.16 | Cierre de vuelo por dueño de vuelo | 1d | 2018-04-26 | 2018-04-26 | 46 |  |  |  |  |  | 0d |  | Ivan | 8h |  |
| 48 | 1.4.17 | Visualización de vuelos por grupo de aerolíneas | 0.5d | 2018-04-27 | 2018-04-27 | 47 |  |  |  |  |  | 0d |  | Ivan | 4h |  |
| 49 | 1.4.18 | Visualización de vuelos según llegada de vuelo | 0.5d | 2018-04-27 | 2018-04-27 | 48 |  |  |  |  |  | 0d |  | Ivan | 4h |  |
| 50 | 1.5 | **Sprint 5** | 11d | 2018-04-30 | 2018-05-14 |  |  |  | 2018-04-30 | 2018-05-08 | 10d | 0d |  |  | 136h |  |
| 51 | 1.5.1 | Seguir y facilitar desarrollo del producto S5 | 6d | 2018-04-30 | 2018-05-07 | 32 |  |  | 2018-04-16 | 2018-04-27 | 10d | 5d | 0d | Yery | 48h |  |
| 52 | 1.5.2 | Visualizar listado de guias y responsabilidades EXPO | 2d | 2018-04-30 | 2018-05-01 | 31 |  |  | 2018-04-16 | 2018-04-17 | 2d | 0d |  | Ivan | 16h |  |
| 53 | 1.5.3 | Visualizar indicadores del tablero Expo | 1d | 2018-05-02 | 2018-05-02 | 52 |  |  | 2018-04-18 | 2018-04-19 | 2d | 0d |  | Ivan | 8h |  |
| 54 | 1.5.4 | Visualizar Avance del Tablero Expo | 1d | 2018-05-03 | 2018-05-03 | 53 |  |  | 2018-04-20 | 2018-04-23 | 2d | 0d |  | Ivan | 8h |  |
| 55 | 1.5.5 | Visualizar indicadores del tablero Expo | 1d | 2018-05-04 | 2018-05-04 | 54 |  |  | 2018-04-24 | 2018-04-24 | 1d | 0d |  | Ivan | 8h |  |
| 56 | 1.5.6 | Seguimiento y control de calidad del Tablero | 6d | 2018-05-07 | 2018-05-14 | 55 |  |  | 2018-04-25 | 2018-04-25 | 1d | 0d |  | Miguel | 48h |  |

| ID | WBS | Task | Duration | Start | Finish | Predecessors | Baseline start | Baseline finish | Baseline duration | Total slack | Resources | Work |
| --- | --- | --- | --- | --- | --- | --- | --- | --- | --- | --- | --- | --- |
| 57 | 1.6 | **Sprint 6** | 15d | 2018-05-08 | 2018-05-28 |  | 2018-05-09 | 2018-05-18 | 10d | 0d |  | 120h |
| 58 | 1.6.1 | Preparar cierre del proyecto | 5d | 2018-05-08 | 2018-05-14 | 51 | 2018-04-30 | 2018-05-11 | 10d | 10d | Yery | 40h |
| 59 | 1.6.2 | Afinar diseño/funcionalidad del tablero | 3d | 2018-05-15 | 2018-05-17 | 50 | 2018-04-30 | 2018-05-02 | 3d | 0d | Ivan | 24h |
| 60 | 1.6.3 | Ingresar y/o actualizar bd de tablas maestras | 2d | 2018-05-18 | 2018-05-21 | 59 | 2018-05-03 | 2018-05-07 | 3d | 0d | Ivan | 16h |
| 61 | 1.6.4 | Seguimiento y control de calidad del Tablero | 5d | 2018-05-22 | 2018-05-28 | 60 | 2018-05-08 | 2018-05-11 | 4d | 0d | Jimmy | 40h |
